# Science Resources Scrum - test

Schedule from MS Project, 2015-02-23 to 2015-08-20, A marks actual dates.

## Calendars

- Standard: Mon-Fri 08:00-12:00, 13:00-17:00; Sat-Sun off.

## Resources

| Resource |
| --- |
| Aditya Rastogi |
| Balaji Ramanathan |
| Jared Carlson |
| Keith Vertrees |
| Tony Smith |
| Shareth Hariharan |
| Joyce Zhang |
| ? |
| Tony Smith |
| Team |

## Schedule

| ID | WBS | Task | Type | Duration | Start | Finish | Predecessors | Complete | Remaining | Total slack | Free slack | Constraint | Deadline | Resources | Work | Actual work | Customer | Comment |
| --- | --- | --- | --- | --- | --- | --- | --- | --- | --- | --- | --- | --- | --- | --- | --- | --- | --- | --- |
| 1 | 1 | **Base & MDO** |  | 45d? | 2015-02-23 A | 2015-04-24 |  | 7% | 41.67d? | 84d |  |  |  |  | 389.6h | 19.2h |  |  |
| 2 | 1.1 | **Argos** |  | 23d? | 2015-03-02 A | 2015-04-02 |  | 14% | 19.71d? | 101d |  |  |  |  | 51.2h | 6.4h | Argos |  |
| 3 | 1.1.1 | TNT analysis |  | 1d? | 2015-03-02 A | 2015-03-02 A |  | 100% |  |  |  |  | 2015-03-02 | Jared Carlson [80%] | 6.4h | 6.4h | Argos |  |
| 4 | 1.1.2 | Reverse Engineer Accentures methods |  | 1d? | 2015-03-09 | 2015-03-09 |  |  |  | 118d |  | start no earlier than 2015-03-09 |  | Keith Vertrees [80%]; Shareth Hariharan [80%] | 12.8h |  |  |  |
| 5 | 1.1.3 | PLA / TNT analysis |  | 1d? | 2015-03-09 | 2015-03-09 |  |  |  | 118d |  | start no earlier than 2015-03-09 |  | Shareth Hariharan [80%] | 6.4h |  | Argos |  |
| 6 | 1.1.4 | PLA plan to Argos |  | 1d? | 2015-03-31 | 2015-03-31 |  |  |  | 0d |  | start no earlier than 2015-03-31 | 2015-03-31 | Keith Vertrees [80%] | 6.4h |  | Argos |  |
| 7 | 1.1.5 | Mar TNT | milestone | 0d | 2015-04-02 | 2015-04-02 |  |  |  | 101d |  | start no earlier than 2015-04-02 |  |  |  |  | Argos |  |
| 8 | 1.1.6 | TNT analysis |  | 1d? | 2015-04-01 | 2015-04-01 |  |  |  | 3d |  | start no earlier than 2015-04-01 | 2015-04-06 | Shareth Hariharan [80%] | 6.4h |  | Argos |  |
| 9 | 1.1.7 | PLA / TNT analysis |  | 1d? | 2015-04-01 | 2015-04-01 |  |  |  | 101d |  | start no earlier than 2015-04-01 |  | Shareth Hariharan [80%] | 6.4h |  | Argos |  |
| 10 | 1.1.8 | TNT analysis |  | 1d? | 2015-04-01 | 2015-04-01 |  |  |  | 24d |  | start no earlier than 2015-04-01 | 2015-05-05 | Shareth Hariharan [80%] | 6.4h |  | Argos |  |
| 11 | 1.2 | **BevMo!** |  | 1d? | 2015-03-09 | 2015-03-09 |  |  |  | 118d |  |  |  |  |  |  | BevMo! |  |
| 12 | 1.2.1 | Renewal Support |  | 1d? | 2015-03-09 | 2015-03-09 |  |  |  | 118d |  | start no earlier than 2015-03-09 |  |  |  |  | BevMo! | pend 3/9 |
| 13 | 1.3 | **Brookshire** |  | 1d? | 2015-03-09 | 2015-03-09 |  |  |  | 118d |  |  |  |  | 6.4h |  | Brookshire |  |
| 14 | 1.3.1 | Data Validation |  | 1d? | 2015-03-09 | 2015-03-09 |  |  |  | 118d |  | start no earlier than 2015-03-09 |  | Shareth Hariharan [80%] | 6.4h |  | Brookshire | talk to Jared |
| 15 | 1.4 | **Cabela** |  | 1d? | 2015-02-26 A | 2015-02-26 A |  | 100% |  |  |  |  |  |  |  |  | Cabela |  |
| 16 | 1.4.1 | PLA results |  | 1d? | 2015-02-26 A | 2015-02-26 A |  | 100% |  |  |  |  | 2015-02-28 |  |  |  | Cabela | complete? |
| 17 | 1.5 | **Delhaize** |  | 1d? | 2015-03-02 | 2015-03-02 |  |  |  | 123d |  |  |  |  | 6.4h |  | Delhaize |  |
| 18 | 1.5.1 | **MDO Hindcast** |  | 1d? | 2015-03-02 | 2015-03-02 |  |  |  | 123d |  |  |  |  | 6.4h |  | Delhaize |  |
| 19 | 1.5.1.1 | Planning |  | 1d? | 2015-03-02 | 2015-03-02 |  |  |  | 123d |  |  |  | Keith Vertrees [80%] | 6.4h |  | Delhaize | underway |
| 20 | 1.5.1.2 | Event creation |  | 1d? | 2015-03-02 | 2015-03-02 |  |  |  | 123d |  |  |  |  |  |  | Delhaize | TBS |
| 21 | 1.6 | **Dicks Sporting Goods** |  | 1d? | 2015-03-02 | 2015-03-02 |  |  |  | 123d |  |  |  |  | 6.4h |  | DSG |  |
| 22 | 1.6.1 | MDO VM |  | 1d? | 2015-03-02 | 2015-03-02 |  |  |  | 123d |  |  |  | Keith Vertrees [80%] | 6.4h |  | DSG | pend on DSG |
| 23 | 1.7 | **Dixy / Victoria** |  | 8.75d? | 2015-03-02 | 2015-03-12 |  |  |  | 115.25d |  |  |  |  | 124.8h |  | Dixy |  |
| 24 | 1.7.1 | **SZC** |  | 8.75d? | 2015-03-02 | 2015-03-12 |  |  |  | 115.25d |  |  |  | Balaji Ramanathan [80%] | 112h |  | Dixy | ready to start |
| 25 | 1.7.1.1 | Elasticity Zones |  | 5d? | 2015-03-02 | 2015-03-06 |  |  |  | 115.25d | 0d |  |  | Balaji Ramanathan [80%] | 32h |  | Dixy |  |
| 26 | 1.7.1.2 | Region overlay |  | 2.5d? | 2015-03-09 | 2015-03-11 | 25 |  |  | 115.25d | 0d |  |  | Balaji Ramanathan [80%] | 16h |  | Dixy |  |
| 27 | 1.7.1.3 | Results |  | 1.25d? | 2015-03-11 | 2015-03-12 | 26 |  |  | 115.25d |  |  |  | Balaji Ramanathan [80%] | 8h |  | Dixy |  |
| 28 | 1.7.2 | ICA |  | 1d? | 2015-03-04 | 2015-03-04 |  |  |  | 121d |  | start no earlier than 2015-03-04 |  | Shareth Hariharan [80%] | 6.4h |  | Dixy | ready to start |
| 29 | 1.7.3 | ICA |  | 1d? | 2015-03-04 | 2015-03-04 |  |  |  | 121d |  | start no earlier than 2015-03-04 |  | Shareth Hariharan [80%] | 6.4h |  | Victoria | pend on regions? |

| ID | WBS | Task | Duration | Start | Finish | Predecessors | Complete | Remaining | Total slack | Free slack | Constraint | Deadline | Resources | Work | Customer | Comment |
| --- | --- | --- | --- | --- | --- | --- | --- | --- | --- | --- | --- | --- | --- | --- | --- | --- |
| 30 | 1.8 | **eBags** | 1d? | 2015-03-02 | 2015-03-02 |  |  |  | 4d |  |  |  |  | 6.4h | eBags |  |
| 31 | 1.8.1 | CRA delivery | 1d? | 2015-03-02 | 2015-03-02 |  |  |  | 4d |  |  | 2015-03-06 | Keith Vertrees [80%] | 6.4h | eBags |  |
| 32 | 1.9 | **Farmacorp** | 1d? | 2015-03-02 | 2015-03-02 |  |  |  | 123d |  |  |  |  | 6.4h | Farmacorp |  |
| 33 | 1.9.1 | ICA | 1d? | 2015-03-02 | 2015-03-02 |  |  |  | 123d |  |  |  | Shareth Hariharan [80%] | 6.4h | Farmacorp | talk to Jared |
| 34 | 1.10 | **Metro** | 1d? | 2015-03-16 | 2015-03-16 |  |  |  | 113d |  |  |  |  | 6.4h | Metro |  |
| 35 | 1.10.1 | Fresh expansion | 1d? | 2015-03-16 | 2015-03-16 |  |  |  | 113d |  | start no earlier than 2015-03-16 |  | Keith Vertrees [80%] | 6.4h | Metro | possible onsite |
| 36 | 1.11 | **MGM** | 1d? | 2015-03-09 | 2015-03-09 |  |  |  | 118d |  |  |  |  | 6.4h | MGM |  |
| 37 | 1.11.1 | Science Validation | 1d? | 2015-03-09 | 2015-03-09 |  |  |  | 118d |  | start no earlier than 2015-03-09 |  | Shareth Hariharan [80%] | 6.4h | MGM |  |
| 38 | 1.12 | New Castle | 1d? | 2015-03-02 | 2015-03-02 |  |  |  | 123d |  |  |  |  |  | New Castle | no news. Follow up. |
| 39 | 1.13 | **PetSmart** | 1d? | 2015-03-06 | 2015-03-06 |  |  |  | 119d |  |  |  |  |  | Petsmart |  |
| 40 | 1.13.1 | monitor T&C | 1d? | 2015-03-06 | 2015-03-06 |  |  |  | 119d |  | start no earlier than 2015-03-06 |  |  |  | Petsmart |  |
| 41 | 1.14 | **Rema** | 40d? | 2015-03-02 | 2015-04-24 |  |  |  | 10d |  |  |  |  | 38.4h | Rema |  |
| 42 | 1.14.1 | Planning | 1d? | 2015-03-02 | 2015-03-02 |  |  |  | 10d |  |  | 2015-03-16 | Keith Vertrees [80%] | 6.4h | Rema | underway |
| 43 | 1.14.2 | onsite discovery | 5d? | 2015-04-20 | 2015-04-24 |  |  |  | 84d |  | finish no earlier than 2015-04-24 |  | Keith Vertrees [80%] | 32h | Rema |  |
| 44 | 1.15 | **Save A Lot** | 2d? | 2015-03-09 | 2015-03-10 |  |  |  | 117d |  |  |  |  | 12.8h | Save A Lot |  |
| 45 | 1.15.1 | Data investigation | 1d? | 2015-03-09 | 2015-03-09 |  |  |  | 117d | 0d | start no earlier than 2015-03-09 |  | Keith Vertrees [80%] | 6.4h | Save A Lot |  |
| 46 | 1.15.2 | VM | 1d? | 2015-03-10 | 2015-03-10 | 45 |  |  | 117d |  |  |  | Shareth Hariharan [80%] | 6.4h | Save A Lot | Blocked on data issues |
| 47 | 1.16 | **SaveMart** | 3d? | 2015-03-02 A | 2015-03-04 |  | 50% | 1.5d? | 7d |  |  |  |  | 6.4h | SaveMart |  |
| 48 | 1.16.1 | Science Validation | 1d? | 2015-03-02 A | 2015-03-02 A |  | 100% |  |  |  |  |  |  |  | SaveMart |  |
| 49 | 1.16.2 | ICA | 1d? | 2015-03-04 | 2015-03-04 |  |  |  | 7d |  | start no earlier than 2015-03-04 | 2015-03-13 | Shareth Hariharan [80%] | 6.4h | SaveMart |  |
| 50 | 1.17 | **Tire Battery Co** | 1d? | 2015-03-09 | 2015-03-09 |  |  |  | 118d |  |  |  |  | 6.4h | TBC |  |
| 51 | 1.17.1 | VM | 1d? | 2015-03-09 | 2015-03-09 |  |  |  | 118d |  | start no earlier than 2015-03-09 |  | Keith Vertrees [80%] | 6.4h | TSC | dsicuss next steps |
| 52 | 1.18 | **Tractor Supply Co** | 1d? | 2015-03-09 | 2015-03-09 |  |  |  | 118d |  |  |  |  | 6.4h | TSC |  |
| 53 | 1.18.1 | VM meeting | 1d? | 2015-03-09 | 2015-03-09 |  |  |  | 118d |  | start no earlier than 2015-03-09 |  | Keith Vertrees [80%] | 6.4h | TSC | dsicuss next steps |

| ID | WBS | Task | Duration | Start | Finish | Predecessors | Complete | Remaining | Total slack | Free slack | Constraint | Deadline | Resources | Work | Actual work | Customer | Comment |
| --- | --- | --- | --- | --- | --- | --- | --- | --- | --- | --- | --- | --- | --- | --- | --- | --- | --- |
| 54 | 1.19 | **Vitamin Shoppe** | 7.62d? | 2015-02-23 A | 2015-03-04 |  | 14% | 6.59d? | 121.38d |  |  |  |  | 44h | 6.4h | VSI |  |
| 55 | 1.19.1 | Demographic SZC | 2.5d? | 2015-02-23 A | 2015-02-25 |  | 40% | 1.5d? | -0.75d | 0d | start no earlier than 2015-03-02 |  | Balaji Ramanathan [80%] | 16h | 6.4h | VSI | for Enrico |
| 56 | 1.19.2 | Results Preso | 1.25d | 2015-02-25 | 2015-02-26 | 55 |  |  | -0.75d | 0d | start no earlier than 2015-02-25 | 2015-02-25 | Balaji Ramanathan [80%] | 8h |  | VSI |  |
| 57 | 1.19.3 | Iteration & Analysis | 2.5d? | 2015-02-26 | 2015-03-03 | 56 |  |  | 122.25d | 0d |  |  | Balaji Ramanathan [80%] | 16h |  | VSI |  |
| 58 | 1.19.4 | Maps & Analysis | 0.5d | 2015-03-03 | 2015-03-03 | 57 |  |  | 122.25d |  |  |  |  |  |  | VSI |  |
| 59 | 1.19.5 | Review & Handoff | 0.62d | 2015-03-04 | 2015-03-04 |  |  |  | 0.38d |  | start no earlier than 2015-03-04 | 2015-03-04 | Balaji Ramanathan [80%] | 4h |  | VSI |  |
| 60 | 1.20 | **Unicoop** | 36.25d? | 2015-03-02 A | 2015-04-21 |  | 5% | 34.29d? | 87.75d |  |  |  |  | 54.4h | 6.4h | Unicoop |  |
| 61 | 1.20.1 | Services preso | 1d? | 2015-03-02 A | 2015-03-02 A |  | 100% |  |  |  | start no earlier than 2015-03-02 |  | Keith Vertrees [80%] | 6.4h | 6.4h | Unicoop | for Enrico |
| 62 | 1.20.2 | Data Load | 10d | 2015-03-20 | 2015-04-02 |  |  |  | 92.5d | 0d | start no earlier than 2015-03-20 |  |  |  |  | Unicoop |  |
| 63 | 1.20.3 | Validation | 1.25d | 2015-04-03 | 2015-04-06 | 62 |  |  | 92.5d | 4.75d |  |  | Shareth Hariharan [80%] | 8h |  | Unicoop |  |
| 64 | 1.20.4 | SZC | 6.25d? | 2015-04-13 | 2015-04-21 | 63 |  |  | 87.75d |  | start no earlier than 2015-04-13 |  | Balaji Ramanathan [80%] | 40h |  | Unicoop |  |
| 65 | 2 | **Promo & IF** | 25d? | 2015-03-02 | 2015-04-03 |  |  |  | 4d |  |  |  |  | 344h |  |  |  |
| 66 | 2.1 | **Dixy** | 15d? | 2015-03-16 | 2015-04-03 |  |  |  | 99d |  |  |  | Aditya Rastogi [80%] | 220.8h |  | Dixy |  |
| 67 | 2.1.1 | Onsite education | 5d? | 2015-03-16 | 2015-03-20 |  |  |  | 109d |  | finish no earlier than 2015-03-20 |  | Aditya Rastogi [80%] | 32h |  | Dixy |  |
| 68 | 2.1.2 | Hindcast analysis | 1d? | 2015-03-20 | 2015-03-20 |  |  |  | 109d |  | finish no earlier than 2015-03-20 |  | Aditya Rastogi [80%] | 6.4h |  | Dixy |  |
| 69 | 2.1.3 | Hindcast | 1d? | 2015-03-27 | 2015-03-27 |  |  |  | 104d |  | start no earlier than 2015-03-27 |  | Jared Carlson [80%] | 6.4h |  | Dixy |  |
| 70 | 2.1.4 | MBA | 10d? | 2015-03-23 | 2015-04-03 |  |  |  | 99d |  | start no earlier than 2015-03-23 |  | Joyce Zhang | 80h |  | Dixy | starting |
| 71 | 2.2 | Domo | 1d? | 2015-03-02 | 2015-03-02 |  |  |  | 4d |  |  | 2015-03-06 | Aditya Rastogi [80%] | 6.4h |  | Domo |  |
| 72 | 2.3 | **Michaels** | 3d? | 2015-03-02 | 2015-03-04 |  |  |  | 4d |  |  |  | Aditya Rastogi [80%] | 25.6h |  | Michaels |  |
| 73 | 2.3.1 | Data spec & proposal | 1d? | 2015-03-04 | 2015-03-04 |  |  |  | 2d |  | start no earlier than 2015-03-04 | 2015-03-06 | Aditya Rastogi [80%] | 6.4h |  | Michaels |  |
| 74 | 2.3.2 | ETL | 1d? | 2015-03-02 | 2015-03-02 |  |  |  | 123d |  |  |  |  |  |  | Michaels |  |
| 75 | 2.3.3 | POC | 1d? | 2015-03-02 | 2015-03-02 |  |  |  | 123d |  |  |  |  |  |  | Michaels |  |
| 76 | 2.4 | **Shnucks** | 1d? | 2015-03-02 | 2015-03-02 |  |  |  | 123d |  |  |  | Aditya Rastogi [80%] | 19.2h |  | Schnucks |  |
| 77 | 2.4.1 | ETL | 1d? | 2015-03-02 | 2015-03-02 |  |  |  | 123d |  |  |  | Aditya Rastogi [80%] | 6.4h |  | Schnucks |  |
| 78 | 2.4.2 | POC | 1d? | 2015-03-02 | 2015-03-02 |  |  |  | 123d |  |  |  | Aditya Rastogi [80%] | 6.4h |  | Schnucks |  |
| 79 | 2.5 | Smart & Final | 3d? | 2015-03-02 | 2015-03-04 |  |  |  | 121d |  |  |  | Aditya Rastogi [80%] | 19.2h |  | Smart & Final |  |
| 80 | 2.6 | Sunglass Hut | 1d? | 2015-03-02 | 2015-03-02 |  |  |  | 4d |  |  | 2015-03-06 | Aditya Rastogi [80%] | 6.4h |  | Sunglass Hut |  |

| ID | WBS | Task | Duration | Start | Finish | Total slack | Constraint | Resources | Work | Customer |
| --- | --- | --- | --- | --- | --- | --- | --- | --- | --- | --- |
| 81 | 2.7 | **Tire Battery Co** | 1d? | 2015-03-09 | 2015-03-09 | 118d |  |  | 6.4h | TBC |
| 82 | 2.7.1 | Promo | 1d? | 2015-03-09 | 2015-03-09 | 118d | start no earlier than 2015-03-09 | Aditya Rastogi [80%] | 6.4h | TSC |
| 83 | 2.8 | **TRU** | 1d? | 2015-03-02 | 2015-03-02 | 123d |  | Aditya Rastogi [80%] | 40h | TRU |
| 84 | 2.8.1 | Q4 offers | 1d? | 2015-03-02 | 2015-03-02 | 123d |  | Jared Carlson [80%] | 6.4h | TRU |
| 85 | 2.8.2 | Offer validation | 1d? | 2015-03-02 | 2015-03-02 | 123d |  | Jared Carlson [80%] | 6.4h | TRU |
| 86 | 2.8.3 | Hindcast analysis | 1d? | 2015-03-02 | 2015-03-02 | 123d |  | Jared Carlson [80%] | 6.4h | TRU |
| 87 | 2.8.4 | UAT | 1d? | 2015-03-02 | 2015-03-02 | 123d |  | Aditya Rastogi [80%] | 6.4h | TRU |
| 88 | 2.8.5 | new item forecast | 1d? | 2015-03-02 | 2015-03-02 | 123d |  | Joyce Zhang | 8h | TRU |
| 89 | 2.8.6 | MBA | 1d? | 2015-03-02 | 2015-03-02 | 123d |  |  |  | TRU |
| 90 | 3 | **Core / Process** | 5d? | 2015-03-02 | 2015-03-06 | 119d |  |  | 70.4h | internal |
| 91 | 3.1 | **Data Validation** | 5d? | 2015-03-02 | 2015-03-06 | 119d |  |  | 12.8h | Internal |
| 92 | 3.1.1 | Verification Handoff | 1d? | 2015-03-02 | 2015-03-02 | 123d |  | Shareth Hariharan [80%] | 6.4h | Internal |
| 93 | 3.1.2 | Checkin | 1d? | 2015-03-06 | 2015-03-06 | 119d | finish no earlier than 2015-03-06 | Balaji Ramanathan [80%] | 6.4h | Internal |
| 94 | 3.1.3 | Valdiation | 1d? | 2015-03-02 | 2015-03-02 | 123d |  |  |  | Internal |
| 95 | 3.1.4 | Adv Validation | 1d? | 2015-03-02 | 2015-03-02 | 123d |  |  |  | Internal |
| 96 | 3.2 | Daily Pricing | 1d? | 2015-03-02 | 2015-03-02 | 123d |  |  |  | Internal |
| 97 | 3.3 | **Alteryx Scripting** | 1d? | 2015-03-02 | 2015-03-02 | 123d |  |  | 24h | internal |
| 98 | 3.3.1 | MBA scripts | 1d? | 2015-03-02 | 2015-03-02 | 123d |  | Joyce Zhang | 8h | Internal |
| 99 | 3.3.2 | Hindcast scripts | 1d? | 2015-03-02 | 2015-03-02 | 123d |  | Joyce Zhang | 8h | Internal |
| 100 | 3.3.3 | Grid Mgt | 1d? | 2015-03-02 | 2015-03-02 | 123d |  | Joyce Zhang | 8h | Internal |
| 101 | 3.4 | Source Mgt | 1d? | 2015-03-02 | 2015-03-02 | 123d |  | Balaji Ramanathan [80%] | 6.4h | Internal |
| 102 | 3.5 | A/B test | 1d? | 2015-03-02 | 2015-03-02 | 123d |  | Balaji Ramanathan [80%] | 6.4h | internal |
| 103 | 3.6 | MDO VM Event creation | 1d? | 2015-03-02 | 2015-03-02 | 123d |  | Keith Vertrees [80%] | 6.4h | Internal |
| 104 | 3.7 | Standard Templates | 1d? | 2015-03-02 | 2015-03-02 | 123d |  |  |  | Internal |
| 105 | 3.8 | eBench | 1d? | 2015-03-02 | 2015-03-02 | 123d |  |  |  |  |
| 106 | 3.9 | SZC improvements | 1d? | 2015-03-02 | 2015-03-02 | 123d |  | Balaji Ramanathan [80%] | 6.4h | Internal |

| ID | WBS | Task | Duration | Start | Finish | Complete | Remaining | Total slack | Constraint | Deadline | Resources | Work | Customer | Comment |
| --- | --- | --- | --- | --- | --- | --- | --- | --- | --- | --- | --- | --- | --- | --- |
| 107 | 3.10 | **Services Dashboard** | 1d? | 2015-03-02 | 2015-03-02 |  |  | 123d |  |  |  | 8h | Internal |  |
| 108 | 3.10.1 | Gallery prototype | 1d? | 2015-03-02 | 2015-03-02 |  |  | 123d |  |  |  |  | Internal |  |
| 109 | 3.10.2 | eBench | 1d? | 2015-03-02 | 2015-03-02 |  |  | 123d |  |  | ? | 8h | Internal |  |
| 110 | 3.10.3 | VM reports | 1d? | 2015-03-02 | 2015-03-02 |  |  | 123d |  |  |  |  | Internal |  |
| 111 | 4 | **New Services / Innovation** | 23d? | 2015-03-02 A | 2015-04-01 | 9% | 20.91d? | 101d |  |  |  | 51.2h | internal |  |
| 112 | 4.1 | mBench (MDO Strategy) | 1d? | 2015-03-02 | 2015-03-02 |  |  | 123d |  |  | Keith Vertrees [80%] | 6.4h | Internal |  |
| 113 | 4.2 | **Fast POC** | 1d? | 2015-03-02 | 2015-03-02 |  |  | 123d |  |  |  | 19.2h | internal |  |
| 114 | 4.2.1 | Base POC | 1d? | 2015-03-02 | 2015-03-02 |  |  | 123d |  |  | Aditya Rastogi [80%] | 6.4h | Internal |  |
| 115 | 4.2.2 | Promo POC | 1d? | 2015-03-02 | 2015-03-02 |  |  | 123d |  |  | Aditya Rastogi [80%] | 6.4h | Internal |  |
| 116 | 4.2.3 | MDO POC | 1d? | 2015-03-02 | 2015-03-02 |  |  | 123d |  |  | Aditya Rastogi [80%] | 6.4h | Internal |  |
| 117 | 4.3 | **pBench (Promo Strategy)** | 6d? | 2015-03-04 | 2015-03-11 |  |  | 0d |  |  |  | 12.8h | Internal |  |
| 118 | 4.3.1 | Science Seminar | 1d? | 2015-03-04 | 2015-03-04 |  |  | 0d | start no earlier than 2015-03-04 | 2015-03-04 | Aditya Rastogi [80%] | 6.4h | Internal |  |
| 119 | 4.3.2 | Marketing Webinar | 1d? | 2015-03-11 | 2015-03-11 |  |  | 0d | start no earlier than 2015-03-11 | 2015-03-11 | Aditya Rastogi [80%] | 6.4h |  |  |
| 120 | 4.4 | CRA | 1d? | 2015-03-02 | 2015-03-02 |  |  | 123d |  |  | Keith Vertrees [80%] | 6.4h | Internal |  |
| 121 | 4.5 | **UT Capstone** | 1d? | 2015-03-06 | 2015-03-06 |  |  | 119d |  |  | Keith Vertrees [80%] | 6.4h | Internal |  |
| 122 | 4.5.1 | Data Val update | 1d? | 2015-03-06 | 2015-03-06 |  |  | 119d | finish no earlier than 2015-03-06 |  |  |  | Internal |  |
| 123 | 4.6 | **Science Seminars** | 21d? | 2015-03-04 A | 2015-04-01 | 33% | 14d? | 0d |  |  |  |  | Internal |  |
| 124 | 4.6.1 | Aditya | 1d? | 2015-03-04 A | 2015-03-04 A | 100% |  |  | start no earlier than 2015-03-04 | 2015-03-04 |  |  | Internal |  |
| 125 | 4.6.2 | Srikanth Jagabathula, NYU | 1d? | 2015-03-18 | 2015-03-18 |  |  | 0d | start no earlier than 2015-03-18 | 2015-03-18 |  |  | Internal | scheduled |
| 126 | 4.6.3 | TBD | 1d? | 2015-04-01 | 2015-04-01 |  |  | 0d | start no earlier than 2015-04-01 | 2015-04-01 |  |  | Internal | working |
| 127 | 5 | **Travel / Vacation** | 119d? | 2015-03-09 | 2015-08-20 |  |  | 0d |  |  |  | 860.8h |  |  |
| 128 | 5.1 | Promo Webinar - Austin | 4d? | 2015-03-09 | 2015-03-12 |  |  | 115d | finish no earlier than 2015-03-12 |  | Aditya Rastogi [80%] | 25.6h | Internal |  |
| 129 | 5.2 | Victoria Promo Hindcast Methodology- Moscow | 5d? | 2015-03-16 | 2015-03-21 |  |  | 109d | finish no earlier than 2015-03-21 |  | Aditya Rastogi [80%] | 32h | Victoria |  |
| 130 | 5.3 | Dixy Promo Hindcast Methodology- Moscow | 5d? | 2015-03-16 | 2015-03-21 |  |  | 109d | finish no earlier than 2015-03-21 |  | Aditya Rastogi [80%] | 32h | Dixy |  |
| 131 | 5.4 | Rema Base Discovery - Oslo | 5d? | 2015-04-20 | 2015-04-24 |  |  | 84d | finish no earlier than 2015-04-24 |  | Keith Vertrees [80%]; Shareth Hariharan [80%] | 64h | Rema |  |
| 132 | 5.5 | Rema Promo Discovery - Oslo | 5d? | 2015-05-04 | 2015-05-09 |  |  | 74d | finish no earlier than 2015-05-09 |  | Aditya Rastogi [80%] | 32h | Rema |  |
| 133 | 5.6 | Team Meetings - Austin | 3d? | 2015-03-16 | 2015-03-18 |  |  | 111d | finish no earlier than 2015-03-18 |  | Tony Smith | 24h | Internal |  |
| 134 | 5.7 | Science Sales meeting - Austin | 3d? | 2015-04-20 | 2015-04-22 |  |  | 86d | finish no earlier than 2015-04-22 |  | Tony Smith | 24h | Internal |  |
| 135 | 5.8 | Science Seminar - Austin | 4d? | 2015-08-17 | 2015-08-20 |  |  | 0d | finish no earlier than 2015-08-20 |  | Team | 32h | Internal |  |
| 136 | 5.9 | Alteryx Conference-Boston | 4d? | 2015-05-18 | 2015-05-21 |  |  | 65d | finish no earlier than 2015-05-21 |  | Aditya Rastogi [80%]; Tony Smith; Joyce Zhang | 89.6h | Internal |  |
| 137 | 5.10 | Remote - Chile | 25d? | 2015-06-15 | 2015-07-17 |  |  | 24d | start no earlier than 2015-06-15 |  | Jared Carlson [80%] | 160h |  |  |
| 138 | 5.11 | Remote - India | 20d? | 2015-03-30 | 2015-04-24 |  |  | 84d | finish no earlier than 2015-04-24 |  | Aditya Rastogi [80%] | 128h |  |  |

| ID | WBS | Task | Duration | Start | Finish | Total slack | Constraint | Resources | Work |
| --- | --- | --- | --- | --- | --- | --- | --- | --- | --- |
| 139 | 5.12 | **Vacation** | 55d? | 2015-03-30 | 2015-06-12 | 49d |  |  | 217.6h |
| 140 | 5.12.1 | Vacation | 10d? | 2015-06-01 | 2015-06-12 | 49d | finish no earlier than 2015-06-12 | Jared Carlson [80%] | 64h |
| 141 | 5.12.2 | Aditya India - 1 | 8d? | 2015-03-30 | 2015-04-08 | 96d | finish no earlier than 2015-04-08 | Aditya Rastogi [80%] | 51.2h |
| 142 | 5.12.3 | Aditya India -2 | 6d? | 2015-04-17 | 2015-04-24 | 84d | finish no earlier than 2015-04-24 | Aditya Rastogi [80%] | 38.4h |
| 143 | 5.12.4 | Vacation | 3d? | 2015-04-27 | 2015-04-29 | 81d | finish no earlier than 2015-04-29 | Tony Smith | 24h |
| 144 | 5.12.5 | Vacation | 5d? | 2015-05-25 | 2015-05-29 | 59d | finish no earlier than 2015-05-29 | Tony Smith | 40h |
